# Plan ITSM

Schedule from MS Project, 2014-03-05 to 2014-09-01, A marks actual dates.
OLX, Inc.

## Calendars

- Standard: Mon-Fri 08:00-12:00, 13:00-17:00; Sat-Sun off.

## Schedule

| ID | WBS | Task | Type | Duration | Start | Finish | Predecessors | Complete | Remaining | Total slack | Constraint |
| --- | --- | --- | --- | --- | --- | --- | --- | --- | --- | --- | --- |
| 1 | 1 | **Service Now** |  | 129d? | 2014-03-05 A | 2014-09-01 |  | 23% | 99.34d? | 0d |  |
| 2 | 1.1 | **Gestión de Cambios** |  | 61d | 2014-03-10 A | 2014-06-02 |  | 61% | 23.61d | 65d |  |
| 3 | 1.1.1 | Aprobar cambios con fecha de comienzo vacía | manual | 20d | 2014-03-10 A | 2014-04-04 A |  | 100% |  |  |  |
| 4 | 1.1.2 | ID3:: Notificación a listas definidas | manual | 21d | 2014-03-10 A | 2014-04-07 A |  | 100% |  |  |  |
| 5 | 1.1.3 | Estado "en preparación" | manual | 21d | 2014-04-22 | 2014-05-20 | 8, 7, 6, 4, 9 |  |  |  |  |
| 6 | 1.1.4 | ID5:: Aprobaciones por escalación | manual | 21d | 2014-03-10 A | 2014-04-07 A |  | 100% |  |  |  |
| 7 | 1.1.5 | ID7 Eliminar aprobación de CAB | manual | 21d | 2014-03-10 A | 2014-04-07 A |  | 100% |  |  |  |
| 8 | 1.1.6 | Habilitar Auditoria en el tool | manual | 21d | 2014-03-10 A | 2014-04-07 A |  | 100% |  |  |  |
| 9 | 1.1.7 | Hacer funcionar el Reporting | manual | 21d | 2014-03-10 A | 2014-04-07 A |  | 100% |  |  |  |
| 10 | 1.1.8 | Temas pendientes en amarillo | manual | 21d | 2014-04-22 | 2014-05-20 | 8, 7, 6, 4, 9 |  |  |  |  |
| 11 | 1.1.9 | Filtro automatico en MY approve | manual | 20d | 2014-04-14 A | 2014-05-09 |  | 40% | 12d |  |  |
| 12 | 1.1.10 | Revisión total de Flujos y estados |  | 30d | 2014-04-22 | 2014-06-02 | 8, 7, 6, 4, 9 |  |  | 65d | start no earlier than 2014-04-22 |
| 13 | 1.2 | **Gestión de Configuración** |  | 70d? | 2014-03-10 A | 2014-06-13 |  | 11% | 62.43d? | 56d |  |
| 14 | 1.2.1 | **CMDB** |  | 70d? | 2014-03-10 A | 2014-06-13 |  | 11% | 62.43d? | 56d |  |
| 15 | 1.2.1.1 | Estructurar Administración | manual | 30d | 2014-03-10 A | 2014-04-18 |  | 40% | 18d |  |  |
| 16 | 1.2.1.2 | Validación de información actual, actualización y asignación de responsabilidades |  | 30d | 2014-04-21 | 2014-05-30 | 15 |  |  | 66d |  |
| 17 | 1.2.1.3 | Integración Puppet | manual | 50d | 2014-04-07 | 2014-06-13 |  |  |  |  |  |
| 18 | 1.2.1.4 | Integración con Herr. monitoreo | manual | 1d? | 2014-03-10 | 2014-03-10 |  |  |  |  |  |
| 19 | 1.3 | **Gestión de Incidentes** |  | 100d | 2014-04-15 | 2014-09-01 |  |  |  | 0d |  |
| 20 | 1.3.1 | Análisis Situación inicial | manual | 15d | 2014-04-15 | 2014-05-05 |  |  |  |  |  |
| 21 | 1.3.2 | Defnición y validación proceso |  | 15d | 2014-05-06 | 2014-05-26 | 20 |  |  | 0d |  |
| 22 | 1.3.3 | Implementación herramienta |  | 30d | 2014-05-27 | 2014-07-07 | 21 |  |  | 0d |  |
| 23 | 1.3.4 | Puesta en marcha y mejora |  | 21d | 2014-07-08 | 2014-08-05 | 22 |  |  | 19d |  |
| 24 | 1.3.5 | Esquema de notificaciones |  | 21d | 2014-05-27 | 2014-06-24 | 21 |  |  | 49d |  |
| 25 | 1.3.6 | KPI / SLA y Reportes |  | 60d | 2014-05-06 | 2014-07-28 | 20 |  |  | 25d |  |
| 26 | 1.3.7 | Automatización de incidentes en base a Eventos |  | 40d | 2014-07-08 | 2014-09-01 | 22 |  |  | 0d |  |
| 27 | 1.3.8 | Unificación con Bug | manual | 30d | 2014-07-08 | 2014-08-18 | 22 |  |  |  |  |

Notes:
- 1: 1) Foco en estabilizar y lograr que la gestión de cambios actual, aporte valor a INFR / 2) Estabilizar la herramienta y reforzar la implementación del proceso con la gente actualmente involucrada. / 3) Trasladar parte de la administración a actores que se encuentren fuera de INFR, descomprimiendo el trabajo de administrar la herramienta.
- 4: :CHANGE::OLX::Standard-Moderate::DESA::Notificacción::ID3 / en este punto se crearon dos campos en el formulario de cambios, Notification Groups y Notification Users, pero no existen notificaciones asociadas a estos campos. Necesitamos que nos confirméis el contenido de las notificaciones y las condiciones de las mismas, para así poder implementarlas y dar por cerrado este punto.
- 6: (ID 5 Excel) Aprobaciones por escalación: para realizar una prueba de este punto hemos realizado los siguientes pasos: / 1) Hemos creado un nuevo cambio (en el entorno de desarrollo) de tipo estándar iniciando sesión con Daniela Casseta (CHG0030936). Nota: Hemos modificado los usuarios reporting_to y manager de Daniela Casseta y Pablo Garrido para entender mejor esta funcionalidad. / 2) Al crear el cambio, vemos que figuran como aprobadores (lista relacionada Approvers) los cuatro posibles aprobadores: Pablo Garrido (reporting_to de Daniela Casetta, persona que creço el cambio), Juan Oyhanart (manager de Daniela Casetta), Adrian Mastronardi (reporting_to de Pablo y Juan) y Paola Kurcbart (manager de Pablo y Juan). / 3) Aprobamos el cambio, a través de la lista relacionada de aprobadores, accedemos a una de las aprobaciones y pulsamos el botón Approve (debe estar completado el campo Planned start date). / 4) Buscamos en el cuadro de texto Outbox (en esta opción se ven las notificaciones que se lanzan) y vemos lo siguiente:
- 14: Parece no estar aportando valor actualmente.~Las relaciones parecen estar inconsistentes. Analizar el nivel de profundidad con el cual se cargaron los CIs ya que parecería ser damasiado profundo para poder mantenerlo y por ende que de valor./ Aplicar algunas mejoras a la identificación de CIs como ser el entorno./ Analizar la automatización e integración con Puppet.

| ID | WBS | Task | Type | Duration | Start | Finish | Predecessors | Complete | Remaining | Total slack |
| --- | --- | --- | --- | --- | --- | --- | --- | --- | --- | --- |
| 28 | 1.4 | **Catálogo de Servicios** |  | 75d | 2014-05-07 | 2014-08-19 |  |  |  | 0d |
| 29 | 1.4.1 | Definir Scope | manual | 15d | 2014-05-07 | 2014-05-27 | 10 |  |  |  |
| 30 | 1.4.2 | Definir estructura del catálogo | manual | 10d | 2014-05-28 | 2014-06-10 | 29 |  |  |  |
| 31 | 1.4.3 | Revisón del catalogo actual y busqueda de responsabilidades | manual | 15d | 2014-06-11 | 2014-07-01 | 30 |  |  |  |
| 32 | 1.4.4 | Cargar la información del catalogo | manual | 30d | 2014-07-02 | 2014-08-12 | 31 |  |  |  |
| 33 | 1.4.5 | Publicar y consensuar | manual | 5d | 2014-08-13 | 2014-08-19 | 32 |  |  |  |
| 34 | 1.5 | **Varios** |  | 56d | 2014-03-05 A | 2014-05-21 |  | 24% | 42.38d | 0d |
| 35 | 1.5.1 | Permisos de Usuarios | manual | 40d | 2014-03-05 A | 2014-04-29 |  | 30% | 28d |  |
| 36 | 1.5.2 | Estructura LDAP | manual | 30d | 2014-04-10 A | 2014-05-21 |  | 10% | 27d |  |
| 37 | 1.5.3 | Clonación de entorno | manual | 3d | 2014-04-08 A | 2014-04-10 A | 8, 7, 6, 4, 9 | 100% |  |  |
| 38 | 1.5.4 | Restaurar Back-Up | manual | 1d | 2014-04-11 | 2014-04-11 | 37 |  |  |  |

Notes:
- 35: Es necesario definir los roles nuevamente y incorporar la herramienta al proceso actual de gestión de accesos. Esto es fundamental para seguir avanzando en la incorporación de nuevos procesos y por eso tiene prioridad
